# rk_v2

Schedule from MS Project, 2021-04-05 to 2021-07-22, status date 2021-05-14, costs in ₽, A marks actual dates.

## Calendars

- Стандартный: Mon-Fri 09:00-13:00, 14:00-18:00; Sat-Sun off. Exceptions (off unless hours are given): 2021-05-01 to 2021-05-03 (Майские праздники), 2021-05-09 to 2021-05-10 (День Победы), 2021-06-14 (День России).

## Resources

| Resource | Group | Unit | Rate | Cost per use |
| --- | --- | --- | --- | --- |
| Аналитик |  |  | 500 | 5000 |
| Ведущий программист | Программисты |  | 437.5 | 3000 |
| Программист 1 | Программисты |  | 312.5 | 2000 |
| Программист 2 | Программисты |  | 312.5 | 2000 |
| Программист 3 | Программисты |  | 312.5 | 2000 |
| Технический писатель |  |  | 250 | 1500 |
| Наборщики данных | Технический персонал |  | 218.75 | 1000 |
| Сервер базы данных | Оборудование |  | 25000 | 10000 |
| Картриджи для принтера | Расходные материалы | шт | 2500 |  |
| Бумага | Расходные материалы | пач | 200 |  |
| Профилактика оборудования |  |  | 3000 |  |

## Schedule

| ID | WBS | Task | Type | Duration | Start | Finish | Predecessors | Complete | Remaining | Baseline start | Baseline finish | Baseline duration | Total slack | Free slack | Constraint | Resources | Work | Actual work | Cost | Baseline cost | Actual cost |
| --- | --- | --- | --- | --- | --- | --- | --- | --- | --- | --- | --- | --- | --- | --- | --- | --- | --- | --- | --- | --- | --- |
| 1 | 1 | **РК 2й вариант** |  | 76d | 2021-04-05 09:00 A | 2021-07-22 18:00 |  | 37% | 48.16d | 2021-04-05 09:00 | 2021-07-23 17:00 | 77.88d |  |  |  |  | 1298.6h | 582h | 542,743.75 | 533,292.5 | 277,406.25 |
| 2 | 1.1 | Начало реализации проекта | milestone | 0d | 2021-04-05 09:00 A | 2021-04-05 09:00 A |  | 100% |  | 2021-04-05 09:00 | 2021-04-05 09:00 | 0d |  |  |  |  |  |  | 1,500 | 1,500 | 1,500 |
| 3 | 1.2 | **Программирование** |  | 39.38d | 2021-04-06 09:00 A | 2021-06-02 12:00 |  | 75% | 9.79d | 2021-04-06 09:00 | 2021-06-02 16:00 | 40.75d | 13.93d |  |  | Сервер базы данных | 756h | 578h | 323,656.25 | 326,000 | 268,031.25 |
| 4 | 1.2.1 | Постановка задачи |  | 5d | 2021-04-06 09:00 A | 2021-04-12 18:00 A | 2FS+1d | 100% |  | 2021-04-06 09:00 | 2021-04-12 18:00 | 5d |  |  |  | Аналитик; Ведущий программист | 80h | 80h | 45,500 | 45,500 | 45,500 |
| 5 | 1.2.2 | Разработка интерфейса |  | 10d | 2021-04-13 09:00 A | 2021-04-26 18:00 A | 4 | 100% |  | 2021-04-13 09:00 | 2021-04-26 18:00 | 10d |  |  |  | Ведущий программист; Программист 1 | 160h | 160h | 65,000 | 65,000 | 65,000 |
| 6 | 1.2.3 | Разработка модулей обработки данных |  | 17.5d | 2021-05-06 17:00 A | 2021-06-02 12:00 | 5 | 29% | 12.38d | 2021-05-06 17:00 | 2021-06-02 16:00 | 17.88d | 13.93d | 0d |  | Программист 2; Программист 3 | 240h | 62h | 79,000 | 79,000 | 23,375 |
| 7 | 1.2.4 | Разработка базы данных |  | 11.25d | 2021-04-13 09:04 A | 2021-05-05 12:28 A | 4 | 100% |  | 2021-04-13 09:04 | 2021-04-22 17:56 | 7.5d |  |  | start no earlier than 2021-04-13 09:00 | Аналитик; Программист 1; Программист 2; Программист 3 | 180h | 180h | 76,156.25 | 78,500 | 76,156.25 |
| 8 | 1.2.5 | Заполнение базы данных |  | 6d | 2021-05-04 17:56 A | 2021-05-13 17:56 A | 7 | 100% |  | 2021-04-22 17:56 | 2021-04-30 17:56 | 6d |  |  |  | Наборщики данных [200%] | 96h | 96h | 23,000 | 23,000 | 23,000 |
| 9 | 1.3 | Программирование завершено | milestone | 0d | 2021-06-02 12:00 | 2021-06-02 12:00 | 6, 8 |  |  | 2021-06-02 16:00 | 2021-06-02 16:00 | 0d | 13.93d | 0d | finish no earlier than 2021-05-26 18:00 |  |  |  | 1,000 | 1,000 |  |
| 10 | 1.4 | **Тестирование и отладка** |  | 26.7d | 2021-05-26 12:00 | 2021-07-05 09:36 |  |  |  | 2021-05-26 16:00 | 2021-06-29 18:00 | 23.25d | 13.93d |  |  |  | 320h |  | 125,450 | 124,000 |  |
| 11 | 1.4.1 | Подготовка тестовых наборов данных |  | 7.5d | 2021-05-26 12:00 | 2021-06-04 17:00 | 9FS-5d |  |  | 2021-05-26 16:00 | 2021-06-07 11:00 | 7.5d | 13.93d | 0d |  | Программист 1; Программист 3 | 80h |  | 30,450 | 29,000 |  |
| 12 | 1.4.2 | Тестирование и исправление ошибок |  | 18.4d | 2021-06-04 17:00 | 2021-07-05 09:36 | 11 |  |  | 2021-06-07 11:00 | 2021-06-29 18:00 | 15d | 13.93d | 0d |  | Ведущий программист; Программист 2 | 240h |  | 95,000 | 95,000 |  |
| 13 | 1.5 | Отладка завершена | milestone | 0d | 2021-07-05 09:36 | 2021-07-05 09:36 | 12 |  |  | 2021-06-29 18:00 | 2021-06-29 18:00 | 0d | 13.93d | 20.62d |  |  |  |  |  |  |  |
| 14 | 1.6 | **Разработка документации** |  | 25d | 2021-06-17 12:00 | 2021-07-22 12:00 |  |  |  | 2021-06-17 16:00 | 2021-07-23 17:00 | 26.12d | 0.62d |  |  | Картриджи для принтера [0.01 шт]; Бумага [0.01 пач] | 200h |  | 59,500 | 59,792.5 |  |
| 15 | 1.6.1 | Составление программной документации |  | 10d | 2021-06-17 12:00 | 2021-07-01 12:00 | 9SS+10d |  |  | 2021-06-17 16:00 | 2021-07-02 13:00 | 10d | 0.62d | 0d |  | Технический писатель | 80h |  | 21,500 | 21,500 |  |
| 16 | 1.6.2 | Составление пользовательской документации |  | 15d | 2021-07-01 12:00 | 2021-07-22 12:00 | 15 |  |  | 2021-07-02 14:00 | 2021-07-23 17:00 | 15d | 0.62d | 0d |  | Технический писатель | 120h |  | 31,500 | 31,500 |  |
| 17 | 1.7 | Конец проекта | milestone | 0d | 2021-07-22 12:00 | 2021-07-22 12:00 | 16 |  |  | 2021-07-23 17:00 | 2021-07-23 17:00 | 0d | 0.62d |  |  |  |  |  |  |  |  |
| 18 | 1.8 | **Профилактика оборудования** |  | 57.38d | 2021-04-27 09:00 A | 2021-07-20 12:00 |  | 29% | 40.98d | 2021-04-27 09:00 | 2021-07-20 12:00 | 58.38d | 0d |  |  |  |  |  | 21,000 | 21,000 | 6,000 |
| 19 | 1.8.1 | Профилактика оборудования 1 | manual | 3h | 2021-04-27 09:00 A | 2021-04-27 12:00 A |  | 100% |  | 2021-04-27 09:00 | 2021-04-27 12:00 | 3h |  |  | start no earlier than 2021-04-27 09:00 | Профилактика оборудования |  |  | 3,000 | 3,000 | 3,000 |
| 20 | 1.8.2 | Профилактика оборудования 2 | manual | 3h | 2021-05-11 09:00 A | 2021-05-11 12:00 A |  | 100% |  | 2021-05-11 09:00 | 2021-05-11 12:00 | 3h |  |  | start no earlier than 2021-05-11 09:00 | Профилактика оборудования |  |  | 3,000 | 3,000 | 3,000 |
| 21 | 1.8.3 | Профилактика оборудования 3 | manual | 3h | 2021-05-25 09:00 | 2021-05-25 12:00 |  |  |  | 2021-05-25 09:00 | 2021-05-25 12:00 | 3h |  |  | start no earlier than 2021-05-25 09:00 | Профилактика оборудования |  |  | 3,000 | 3,000 |  |
| 22 | 1.8.4 | Профилактика оборудования 4 | manual | 3h | 2021-06-08 09:00 | 2021-06-08 12:00 |  |  |  | 2021-06-08 09:00 | 2021-06-08 12:00 | 3h |  |  | start no earlier than 2021-06-08 09:00 | Профилактика оборудования |  |  | 3,000 | 3,000 |  |
| 23 | 1.8.5 | Профилактика оборудования 5 | manual | 3h | 2021-06-22 09:00 | 2021-06-22 12:00 |  |  |  | 2021-06-22 09:00 | 2021-06-22 12:00 | 3h |  |  | start no earlier than 2021-06-22 09:00 | Профилактика оборудования |  |  | 3,000 | 3,000 |  |
| 24 | 1.8.6 | Профилактика оборудования 6 | manual | 3h | 2021-07-06 09:00 | 2021-07-06 12:00 |  |  |  | 2021-07-06 09:00 | 2021-07-06 12:00 | 3h |  |  | start no earlier than 2021-07-06 09:00 | Профилактика оборудования |  |  | 3,000 | 3,000 |  |
| 25 | 1.8.7 | Профилактика оборудования 7 | manual | 3h | 2021-07-20 09:00 | 2021-07-20 12:00 |  |  |  | 2021-07-20 09:00 | 2021-07-20 12:00 | 3h |  |  | start no earlier than 2021-07-20 09:00 | Профилактика оборудования |  |  | 3,000 | 3,000 |  |

Notes:
- 1: Группа из 8 человек, длительность не более 4 месяцев, бюджет не более 620 тыс. руб.

| ID | WBS | Task | Type | Duration | Start | Finish | Complete | Remaining | Total slack | Constraint | Resources | Work | Actual work | Cost | Actual cost |
| --- | --- | --- | --- | --- | --- | --- | --- | --- | --- | --- | --- | --- | --- | --- | --- |
| 26 | 1.9 | **Постановка задач** |  | 52.12d | 2021-05-03 09:00 A | 2021-07-19 10:00 | 17% | 43.44d | 3.88d |  |  | 22.6h | 4h | 10,637.5 | 1,875 |
| 27 | 1.9.1 | Постановка задач 1 | manual | 1h | 2021-05-03 09:00 A | 2021-05-03 10:00 A | 100% |  |  | start no earlier than 2021-05-03 09:00 | Аналитик; Ведущий программист | 2h | 2h | 937.5 | 937.5 |
| 28 | 1.9.2 | Постановка задач 2 | manual | 1h | 2021-05-11 09:00 A | 2021-05-11 10:00 A | 100% |  |  | start no earlier than 2021-05-11 09:00 | Аналитик; Ведущий программист | 2h | 2h | 937.5 | 937.5 |
| 29 | 1.9.3 | Постановка задач 3 | manual | 1h | 2021-05-17 09:00 | 2021-05-17 10:00 |  |  |  | start no earlier than 2021-05-17 09:00 | Аналитик; Ведущий программист | 2h |  | 937.5 |  |
| 30 | 1.9.4 | Постановка задач 4 | manual | 1h | 2021-05-24 09:00 | 2021-05-24 10:00 |  |  |  | start no earlier than 2021-05-24 09:00 | Аналитик; Ведущий программист | 2h |  | 937.5 |  |
| 31 | 1.9.5 | Постановка задач 5 | manual | 1h | 2021-05-31 09:00 | 2021-05-31 10:00 |  |  |  | start no earlier than 2021-05-31 09:00 | Аналитик; Ведущий программист | 2h |  | 937.5 |  |
| 32 | 1.9.6 | Постановка задач 6 | manual | 1h | 2021-06-07 09:00 | 2021-06-07 10:00 |  |  |  | start no earlier than 2021-06-07 09:00 | Аналитик; Ведущий программист [80%] | 1.8h |  | 850 |  |
| 33 | 1.9.7 | Постановка задач 7 |  | 1h | 2021-06-15 09:00 | 2021-06-15 10:00 |  |  | 27.25d | start no earlier than 2021-06-14 09:00 | Аналитик; Ведущий программист [80%] | 1.8h |  | 850 |  |
| 34 | 1.9.8 | Постановка задач 8 | manual | 1h | 2021-06-21 09:00 | 2021-06-21 10:00 |  |  |  | start no earlier than 2021-06-21 09:00 | Аналитик; Ведущий программист [80%] | 1.8h |  | 850 |  |
| 35 | 1.9.9 | Постановка задач 9 | manual | 1h | 2021-06-28 09:00 | 2021-06-28 10:00 |  |  |  | start no earlier than 2021-06-28 09:00 | Аналитик; Ведущий программист [80%] | 1.8h |  | 850 |  |
| 36 | 1.9.10 | Постановка задач 10 | manual | 1h | 2021-07-05 09:00 | 2021-07-05 10:00 |  |  |  | start no earlier than 2021-07-05 09:00 | Аналитик; Ведущий программист [80%] | 1.8h |  | 850 |  |
| 37 | 1.9.11 | Постановка задач 11 | manual | 1h | 2021-07-12 09:00 | 2021-07-12 10:00 |  |  |  | start no earlier than 2021-07-12 09:00 | Аналитик; Ведущий программист [80%] | 1.8h |  | 850 |  |
| 38 | 1.9.12 | Постановка задач 12 | manual | 1h | 2021-07-19 09:00 | 2021-07-19 10:00 |  |  |  | start no earlier than 2021-07-19 09:00 | Аналитик; Ведущий программист [80%] | 1.8h |  | 850 |  |
