Schedule from MS Project, 2021-03-01 to 2021-09-22, status date 2021-02-27, costs in р..
Команда разработчиков из 16 человек. Проект должен быть завершен в течение 6 месяцев. Бюджет проекта: 50 000 рублей

## Calendars

- Стандартный: Mon-Fri 09:00-13:00, 14:00-18:00; Sat-Sun off. Exceptions (off unless hours are given): 2021-03-08 (Международный женский день), 2021-05-03 (Майские каникулы), 2021-05-09 to 2021-05-10 (День победы), 2021-06-12 to 2021-06-14 (День России).

## Resources

| Resource | Group | Rate | Cost per use |
| --- | --- | --- | --- |
| Ведущий программист | Программирование | 10 | 100 |
| Программист#1 | Программирование | 7 | 50 |
| Программист#2 | Программирование | 7 | 50 |
| Программист#3 | Программирование | 7 | 50 |
| Программист#4 | Программирование | 7 | 50 |
| Системный аналитик | Анализ | 20 | 300 |
| Художник-дизайнер | Дизайн | 8 | 70 |
| Технический писатель | Документация | 5 | 20 |
| Web-дизайнер | Internet | 7 | 50 |
| 3D аниматор | Дизайн | 8 | 70 |
| Мультимедиа-корреспондент | М-медиа | 3 | 20 |
| Наборщик данных#1 | Ввод данных | 2 | 10 |
| Наборщик данных#2 | Ввод данных | 2 | 10 |
| Наборщик данных#3 | Ввод данных | 2 | 10 |
| Наборщик данных#4 | Ввод данных | 2 | 10 |
| Наборщик данных#5 | Ввод данных | 2 | 10 |
| Дополнительный сервер | Аренда | 2 |  |

## Schedule

| ID | WBS | Task | Type | Duration | Start | Finish | Predecessors | Total slack | Free slack | Resources | Work | Cost |
| --- | --- | --- | --- | --- | --- | --- | --- | --- | --- | --- | --- | --- |
| 1 | 1 | Начало проекта | milestone | 0w | 2021-03-01 08:00 | 2021-03-01 08:00 |  | 71.88d | 0d |  |  |  |
| 2 | 2 | **Создание интерфейса** |  | 112.38d | 2021-03-01 10:00 | 2021-08-10 13:00 | 1 | 0d |  |  | 560h | 5,550 |
| 3 | 2.1 | **Разработка дизайна интерфейса** |  | 25.62d | 2021-03-01 10:00 | 2021-04-06 16:00 |  | 71.75d | 0d |  | 320h | 2,770 |
| 4 | 2.1.1 | Разработка 2D графических элементов |  | 3w | 2021-03-01 10:00 | 2021-03-23 13:00 |  | 71.75d | 0d | Художник-дизайнер | 120h | 1,030 |
| 5 | 2.1.2 | Разработка 3D графичиских элементов |  | 2w | 2021-03-01 10:00 | 2021-03-16 12:00 | 4SS | 71.75d | 0d | 3D аниматор | 80h | 710 |
| 6 | 2.1.3 | Создание заставки |  | 3w | 2021-03-16 12:00 | 2021-04-06 16:00 | 5 | 71.75d | 70d | 3D аниматор | 120h | 1,030 |
| 7 | 2.2 | Программирование интерфейса |  | 3w | 2021-07-20 14:00 | 2021-08-10 13:00 | 3, 12 | 0d |  | Программист#3; Программист#4 | 240h | 1,780 |
| 8 | 3 | **Построение базы объектов** |  | 85.25d | 2021-03-23 14:00 | 2021-07-23 16:00 |  | 42.75d |  | Дополнительный сервер | 5650h | 15,390 |
| 9 | 3.1 | Анализ и построение структуры базы объектов |  | 2w | 2021-03-23 14:00 | 2021-04-06 16:00 |  | 42.75d | 0d | Системный аналитик | 80h | 1,900 |
| 10 | 3.2 | Программирование средств обработки базы объектов |  | 3w | 2021-04-06 16:00 | 2021-04-27 16:00 | 9 | 42.75d | 0d | Программист#3; Программист#4 | 240h | 1,780 |
| 11 | 3.3 | Наполнение базы объектов |  | 12w | 2021-04-27 16:00 | 2021-07-23 16:00 | 10 | 42.75d |  | Наборщик данных#1; Наборщик данных#2; Наборщик данных#3; Наборщик данных#4; Наборщик данных#5 | 2400h | 4,850 |
| 12 | 4 | **Создание ядра GIS** |  | 97.38d | 2021-03-01 10:00 | 2021-07-20 13:00 |  | 0d |  |  | 1880h | 18,680 |
| 13 | 4.1 | Анализ и проектирование ядра |  | 3w | 2021-03-01 10:00 | 2021-03-23 13:00 |  | 0d |  | Ведущий программист; Системный аналитик | 240h | 4,000 |
| 14 | 4.2 | Создание модели ядра |  | 5.12w | 2021-03-23 14:00 | 2021-04-28 10:00 | 13 | 0d |  | Ведущий программист; Программист#1 | 400h | 3,550 |
| 15 | 4.3 | Тестирование модели ядра |  | 1w | 2021-04-28 10:00 | 2021-05-06 10:00 | 14 | 0d |  | Программист#1 | 40h | 330 |
| 16 | 4.4 | Создание рабочей версии ядра |  | 10.28w | 2021-05-06 10:00 | 2021-07-20 13:00 | 15 | 0d |  | Ведущий программист; Программист#1; Программист#2 | 1200h | 9,800 |
| 17 | 5 | Создание мультимедиа - наполнения |  | 6w | 2021-04-06 16:00 | 2021-05-21 13:00 | 3 | 87d | 83d | Мультимедиа-корреспондент | 240h | 740 |
| 18 | 6 | Создание справочной системы | manual | 2w | 2021-08-12 09:00 | 2021-08-26 11:00 | 7 |  |  | Технический писатель | 80h | 420 |
| 19 | 7 | **Создание руководства пользователя** |  | 27.62d | 2021-07-27 14:00 | 2021-09-03 10:00 | 7FS-10d | 0d |  |  | 160h | 1,010 |
| 20 | 7.1 | Разработка дизайна руководства |  | 1w | 2021-07-27 14:00 | 2021-08-03 15:00 |  | 0d |  | Художник-дизайнер | 40h | 390 |
| 21 | 7.2 | Написание руководства пользователя |  | 3w | 2021-07-29 14:00 | 2021-09-03 10:00 | 20SS+2d | 0d |  | Технический писатель | 120h | 620 |
| 22 | 8 | **Создание web - сайта и поддержка** |  | 23.62d | 2021-07-29 14:00 | 2021-09-01 10:00 |  | 0d |  |  | 248h | 2,106 |
| 23 | 8.1 | Разработка структуры сайта |  | 1d | 2021-07-29 14:00 | 2021-07-30 13:00 | 21SS | 0d |  | Web-дизайнер | 8h | 106 |
| 24 | 8.2 | Разработка дизайна сайта |  | 1.4w | 2021-07-30 14:00 | 2021-08-10 16:00 | 23 | 0d |  | 3D аниматор; Web-дизайнер; Художник-дизайнер | 120h | 1,110 |
| 25 | 8.3 | Наполнение сайта |  | 3w | 2021-08-10 16:00 | 2021-09-01 10:00 | 24 | 0d |  | Web-дизайнер | 120h | 890 |
| 26 | 9 | Тестирование сайта |  | 4.08w | 2021-08-25 10:00 | 2021-09-22 13:00 | 22FS-1w | 0d |  | Ведущий программист; Программист#1; Программист#2 | 480h | 4,040 |
| 27 | 10 | Сдача сайта в эксплуатацию | milestone | 0w | 2021-09-22 13:00 | 2021-09-22 13:00 | 26 | 0d |  |  |  |  |

| ID | WBS | Task | Duration | Start | Finish | Total slack | Free slack | Constraint | Resources | Work | Cost |
| --- | --- | --- | --- | --- | --- | --- | --- | --- | --- | --- | --- |
| 28 | 11 | **Совещание** | 136.12d | 2021-03-01 09:00 | 2021-09-13 10:00 | 7.38d |  |  |  | 1291h | 1,769 |
| 29 | 11.1 | Совещание 1 | 1h | 2021-03-01 09:00 | 2021-03-01 10:00 | 143.38d | 137.88d | start no earlier than 2021-03-01 08:00 | 3D аниматор; Web-дизайнер; Ведущий программист; Мультимедиа-корреспондент; Системный аналитик; Технический писатель; Художник-дизайнер | 7h | 61 |
| 30 | 11.2 | Совещание 2 | 1h | 2021-03-09 09:00 | 2021-03-09 10:00 | 138.38d | 132.88d | start no earlier than 2021-03-08 08:00 | 3D аниматор; Web-дизайнер; Ведущий программист; Мультимедиа-корреспондент; Системный аналитик; Технический писатель; Художник-дизайнер | 7h | 61 |
| 31 | 11.3 | Совещание 3 | 1h | 2021-03-15 09:00 | 2021-03-15 10:00 | 134.38d | 128.88d | start no earlier than 2021-03-15 08:00 | 3D аниматор; Web-дизайнер; Ведущий программист; Мультимедиа-корреспондент; Системный аналитик; Технический писатель; Художник-дизайнер | 7h | 61 |
| 32 | 11.4 | Совещание 4 | 1h | 2021-03-22 09:00 | 2021-03-22 10:00 | 129.38d | 123.88d | start no earlier than 2021-03-22 08:00 | 3D аниматор; Web-дизайнер; Ведущий программист; Мультимедиа-корреспондент; Системный аналитик; Технический писатель; Художник-дизайнер | 7h | 61 |
| 33 | 11.5 | Совещание 5 | 1h | 2021-03-29 09:00 | 2021-03-29 10:00 | 124.38d | 118.88d | start no earlier than 2021-03-29 08:00 | 3D аниматор; Web-дизайнер; Ведущий программист; Мультимедиа-корреспондент; Системный аналитик; Технический писатель; Художник-дизайнер | 7h | 61 |
| 34 | 11.6 | Совещание 6 | 1h | 2021-04-05 09:00 | 2021-04-05 10:00 | 119.38d | 113.88d | start no earlier than 2021-04-05 08:00 | 3D аниматор; Web-дизайнер; Ведущий программист; Мультимедиа-корреспондент; Системный аналитик; Технический писатель; Художник-дизайнер | 7h | 61 |
| 35 | 11.7 | Совещание 7 | 1h | 2021-04-12 09:00 | 2021-04-12 10:00 | 114.38d | 108.88d | start no earlier than 2021-04-12 08:00 | 3D аниматор; Web-дизайнер; Ведущий программист; Мультимедиа-корреспондент; Системный аналитик; Технический писатель; Художник-дизайнер | 7h | 61 |
| 36 | 11.8 | Совещание 8 | 1h | 2021-04-19 09:00 | 2021-04-19 10:00 | 109.38d | 103.88d | start no earlier than 2021-04-19 08:00 | 3D аниматор; Web-дизайнер; Ведущий программист; Мультимедиа-корреспондент; Системный аналитик; Технический писатель; Художник-дизайнер | 7h | 61 |
| 37 | 11.9 | Совещание 9 | 1h | 2021-04-26 09:00 | 2021-04-26 10:00 | 104.38d | 98.88d | start no earlier than 2021-04-26 08:00 | 3D аниматор; Web-дизайнер; Ведущий программист; Мультимедиа-корреспондент; Системный аналитик; Технический писатель; Художник-дизайнер | 7h | 61 |
| 38 | 11.10 | Совещание 10 | 1h | 2021-05-04 09:00 | 2021-05-04 10:00 | 99.38d | 93.88d | start no earlier than 2021-05-03 08:00 | 3D аниматор; Web-дизайнер; Ведущий программист; Мультимедиа-корреспондент; Системный аналитик; Технический писатель; Художник-дизайнер | 7h | 61 |
| 39 | 11.11 | Совещание 11 | 1h | 2021-05-11 09:00 | 2021-05-11 10:00 | 95.38d | 89.88d | start no earlier than 2021-05-10 08:00 | 3D аниматор; Web-дизайнер; Ведущий программист; Мультимедиа-корреспондент; Системный аналитик; Технический писатель; Художник-дизайнер | 7h | 61 |
| 40 | 11.12 | Совещание 12 | 1h | 2021-05-17 09:00 | 2021-05-17 10:00 | 91.38d | 85.88d | start no earlier than 2021-05-17 08:00 | 3D аниматор; Web-дизайнер; Ведущий программист; Мультимедиа-корреспондент; Системный аналитик; Технический писатель; Художник-дизайнер | 7h | 61 |
| 41 | 11.13 | Совещание 13 | 1h | 2021-05-24 09:00 | 2021-05-24 10:00 | 86.38d | 80.88d | start no earlier than 2021-05-24 08:00 | 3D аниматор; Web-дизайнер; Ведущий программист; Мультимедиа-корреспондент; Системный аналитик; Технический писатель; Художник-дизайнер | 7h | 61 |
| 42 | 11.14 | Совещание 14 | 1h | 2021-05-31 09:00 | 2021-05-31 10:00 | 81.38d | 75.88d | start no earlier than 2021-05-31 08:00 | 3D аниматор; Web-дизайнер; Ведущий программист; Мультимедиа-корреспондент; Системный аналитик; Технический писатель; Художник-дизайнер | 7h | 61 |
| 43 | 11.15 | Совещание 15 | 1h | 2021-06-07 09:00 | 2021-06-07 10:00 | 76.38d | 70.88d | start no earlier than 2021-06-07 08:00 | 3D аниматор; Web-дизайнер; Ведущий программист; Мультимедиа-корреспондент; Системный аналитик; Технический писатель; Художник-дизайнер | 7h | 61 |
| 44 | 11.16 | Совещание 16 | 1h | 2021-06-15 09:00 | 2021-06-15 10:00 | 71.38d | 65.88d | start no earlier than 2021-06-14 08:00 | 3D аниматор; Web-дизайнер; Ведущий программист; Мультимедиа-корреспондент; Системный аналитик; Технический писатель; Художник-дизайнер | 7h | 61 |
| 45 | 11.17 | Совещание 17 | 1h | 2021-06-21 09:00 | 2021-06-21 10:00 | 67.38d | 61.88d | start no earlier than 2021-06-21 08:00 | 3D аниматор; Web-дизайнер; Ведущий программист; Мультимедиа-корреспондент; Системный аналитик; Технический писатель; Художник-дизайнер | 7h | 61 |
| 46 | 11.18 | Совещание 18 | 1h | 2021-06-28 09:00 | 2021-06-28 10:00 | 62.38d | 56.88d | start no earlier than 2021-06-28 08:00 | 3D аниматор; Web-дизайнер; Ведущий программист; Мультимедиа-корреспондент; Системный аналитик; Технический писатель; Художник-дизайнер | 7h | 61 |
| 47 | 11.19 | Совещание 19 | 1h | 2021-07-05 09:00 | 2021-07-05 10:00 | 57.38d | 51.88d | start no earlier than 2021-07-05 08:00 | 3D аниматор; Web-дизайнер; Ведущий программист; Мультимедиа-корреспондент; Системный аналитик; Технический писатель; Художник-дизайнер | 7h | 61 |
| 48 | 11.20 | Совещание 20 | 1h | 2021-07-12 09:00 | 2021-07-12 10:00 | 52.38d | 46.88d | start no earlier than 2021-07-12 08:00 | 3D аниматор; Web-дизайнер; Ведущий программист; Мультимедиа-корреспондент; Системный аналитик; Технический писатель; Художник-дизайнер | 7h | 61 |
| 49 | 11.21 | Совещание 21 | 1h | 2021-07-19 09:00 | 2021-07-19 10:00 | 47.38d | 41.88d | start no earlier than 2021-07-19 08:00 | 3D аниматор; Web-дизайнер; Ведущий программист; Мультимедиа-корреспондент; Системный аналитик; Технический писатель; Художник-дизайнер | 7h | 61 |
| 50 | 11.22 | Совещание 22 | 1h | 2021-07-26 09:00 | 2021-07-26 10:00 | 42.38d | 36.88d | start no earlier than 2021-07-26 08:00 | 3D аниматор; Web-дизайнер; Ведущий программист; Мультимедиа-корреспондент; Системный аналитик; Технический писатель; Художник-дизайнер | 7h | 61 |
| 51 | 11.23 | Совещание 23 | 1h | 2021-08-02 09:00 | 2021-08-02 10:00 | 37.38d | 31.88d | start no earlier than 2021-08-02 08:00 | 3D аниматор; Web-дизайнер; Ведущий программист; Мультимедиа-корреспондент; Системный аналитик; Технический писатель; Художник-дизайнер | 7h | 61 |
| 52 | 11.24 | Совещание 24 | 1h | 2021-08-09 09:00 | 2021-08-09 10:00 | 32.38d | 26.88d | start no earlier than 2021-08-09 08:00 | 3D аниматор; Web-дизайнер; Ведущий программист; Мультимедиа-корреспондент; Системный аналитик; Технический писатель; Художник-дизайнер | 7h | 61 |
| 53 | 11.25 | Совещание 25 | 1h | 2021-08-16 09:00 | 2021-08-16 10:00 | 27.38d | 21.88d | start no earlier than 2021-08-16 08:00 | 3D аниматор; Web-дизайнер; Ведущий программист; Мультимедиа-корреспондент; Системный аналитик; Технический писатель; Художник-дизайнер | 7h | 61 |
| 54 | 11.26 | Совещание 26 | 1h | 2021-08-23 09:00 | 2021-08-23 10:00 | 22.38d | 16.88d | start no earlier than 2021-08-23 08:00 | 3D аниматор; Web-дизайнер; Ведущий программист; Мультимедиа-корреспондент; Системный аналитик; Технический писатель; Художник-дизайнер | 7h | 61 |
| 55 | 11.27 | Совещание 27 | 1h | 2021-08-30 09:00 | 2021-08-30 10:00 | 17.38d | 11.88d | start no earlier than 2021-08-30 08:00 | 3D аниматор; Web-дизайнер; Ведущий программист; Мультимедиа-корреспондент; Системный аналитик; Технический писатель; Художник-дизайнер | 7h | 61 |
| 56 | 11.28 | Совещание 28 | 1h | 2021-09-06 09:00 | 2021-09-06 10:00 | 12.38d | 6.88d | start no earlier than 2021-09-06 08:00 | 3D аниматор; Web-дизайнер; Ведущий программист; Мультимедиа-корреспондент; Системный аналитик; Технический писатель; Художник-дизайнер | 7h | 61 |
| 57 | 11.29 | Совещание 29 | 1h | 2021-09-13 09:00 | 2021-09-13 10:00 | 7.38d | 1.88d | start no earlier than 2021-09-13 08:00 | 3D аниматор; Web-дизайнер; Ведущий программист; Мультимедиа-корреспондент; Системный аналитик; Технический писатель; Художник-дизайнер | 7h | 61 |
