Schedule from MS Project, 2021-03-01 to 2021-08-12, status date 2021-02-27, costs in р..
Команда разработчиков из 16 человек. Проект должен быть завершен в течение 6 месяцев. Бюджет проекта: 50 000 рублей

## Calendars

- Стандартный: Mon-Fri 09:00-13:00, 14:00-18:00; Sat-Sun off. Exceptions (off unless hours are given): 2021-03-08 (Международный женский день), 2021-05-03 (Майские каникулы), 2021-05-09 to 2021-05-10 (День победы), 2021-06-12 to 2021-06-14 (День России).

## Resources

| Resource | Group | Rate | Cost per use |
| --- | --- | --- | --- |
| Ведущий программист | Программирование | 10 | 100 |
| Программист#1 | Программирование | 7 | 50 |
| Программист#2 | Программирование | 7 | 50 |
| Программист#3 | Программирование | 7 | 50 |
| Программист#4 | Программирование | 7 | 50 |
| Системный аналитик | Анализ | 20 | 300 |
| Художник-дизайнер | Дизайн | 8 | 70 |
| Технический писатель | Документация | 5 | 20 |
| Web-дизайнер | Internet | 7 | 50 |
| 3D аниматор | Дизайн | 8 | 70 |
| Мультимедиа-корреспондент | М-медиа | 3 | 20 |
| Наборщик данных#1 | Ввод данных | 2 | 10 |
| Наборщик данных#2 | Ввод данных | 2 | 10 |
| Наборщик данных#3 | Ввод данных | 2 | 10 |
| Наборщик данных#4 | Ввод данных | 2 | 10 |
| Наборщик данных#5 | Ввод данных | 2 | 10 |
| Дополнительный сервер | Аренда | 2 |  |

## Schedule

| ID | WBS | Task | Type | Duration | Start | Finish | Predecessors | Baseline start | Baseline finish | Baseline duration | Total slack | Free slack | Constraint | Resources | Work | Cost | Baseline cost |
| --- | --- | --- | --- | --- | --- | --- | --- | --- | --- | --- | --- | --- | --- | --- | --- | --- | --- |
| 1 | 1 | Начало проекта | milestone | 0w | 2021-03-01 08:00 | 2021-03-01 08:00 |  | 2021-03-01 08:00 | 2021-03-01 08:00 | 0w | 50.86d | 0d |  |  |  |  |  |
| 2 | 2 | **Создание интерфейса** |  | 91.49d | 2021-03-01 09:00 | 2021-07-12 12:55 | 1 | 2021-03-01 10:00 | 2021-07-12 15:23 | 91.55d | 0d | 2.2d |  |  | 560h | 5,550 | 5,550 |
| 3 | 2.1 | **Разработка дизайна интерфейса** |  | 25.62d | 2021-03-01 09:00 | 2021-04-06 15:00 |  | 2021-03-01 10:00 | 2021-04-06 16:00 | 25.62d | 50.86d | 0d |  |  | 320h | 2,770 | 2,770 |
| 4 | 2.1.1 | Разработка 2D графических элементов |  | 3w | 2021-03-01 09:00 | 2021-03-23 12:00 |  | 2021-03-01 10:00 | 2021-03-23 13:00 | 3w | 50.86d | 0d |  | Художник-дизайнер | 120h | 1,030 | 1,030 |
| 5 | 2.1.2 | Разработка 3D графичиских элементов |  | 2w | 2021-03-01 09:00 | 2021-03-16 11:00 | 4SS | 2021-03-01 10:00 | 2021-03-16 12:00 | 2w | 50.86d | 0d |  | 3D аниматор | 80h | 710 | 710 |
| 6 | 2.1.3 | Создание заставки |  | 3w | 2021-03-16 11:00 | 2021-04-06 15:00 | 5 | 2021-03-16 12:00 | 2021-04-06 16:00 | 3w | 50.86d | 52.69d |  | 3D аниматор | 120h | 1,030 | 1,030 |
| 7 | 2.2 | Программирование интерфейса |  | 3w | 2021-06-21 12:55 | 2021-07-12 12:55 | 3, 12 | 2021-06-21 15:23 | 2021-07-12 15:23 | 3w | 0d |  |  | Программист#3; Программист#4 | 240h | 1,780 | 1,780 |
| 8 | 3 | **Построение базы объектов** |  | 85.25d | 2021-03-23 12:00 | 2021-07-23 15:00 |  | 2021-03-23 14:00 | 2021-07-23 16:00 | 85.25d | 13.93d |  |  | Дополнительный сервер | 5651h | 15,392 | 15,390 |
| 9 | 3.1 | Анализ и построение структуры базы объектов |  | 2w | 2021-03-23 12:00 | 2021-04-06 15:00 |  | 2021-03-23 14:00 | 2021-04-06 16:00 | 2w | 13.93d | 0d |  | Системный аналитик | 80h | 1,900 | 1,900 |
| 10 | 3.2 | Программирование средств обработки базы объектов |  | 3w | 2021-04-06 15:00 | 2021-04-27 15:00 | 9 | 2021-04-06 16:00 | 2021-04-27 16:00 | 3w | 13.93d | 0d |  | Программист#3; Программист#4 | 240h | 1,780 | 1,780 |
| 11 | 3.3 | Наполнение базы объектов |  | 12w | 2021-04-27 15:00 | 2021-07-23 15:00 | 10 | 2021-04-27 16:00 | 2021-07-23 16:00 | 12w | 13.93d |  |  | Наборщик данных#1; Наборщик данных#2; Наборщик данных#3; Наборщик данных#4; Наборщик данных#5 | 2400h | 4,850 | 4,850 |
| 12 | 4 | **Создание ядра GIS** |  | 76.49d | 2021-03-01 09:00 | 2021-06-21 12:55 |  | 2021-03-01 10:00 | 2021-06-21 15:23 | 76.55d | 0d |  |  |  | 1880h | 18,292.16 | 18,292.16 |
| 13 | 4.1 | Анализ и проектирование ядра |  | 3w | 2021-03-01 09:00 | 2021-03-23 12:00 |  | 2021-03-01 10:00 | 2021-03-23 13:00 | 3w | 0d |  |  | Ведущий программист; Системный аналитик | 240h | 4,000 | 4,000 |
| 14 | 4.2 | Создание модели ядра |  | 5.12w | 2021-03-23 12:00 | 2021-04-27 18:00 | 13 | 2021-03-23 14:00 | 2021-04-28 10:00 | 5.12w | 0d |  |  | Ведущий программист; Программист#1 | 400h | 3,550 | 3,550 |
| 15 | 4.3 | Тестирование модели ядра |  | 1w | 2021-04-28 09:00 | 2021-05-05 18:00 | 14 | 2021-04-28 10:00 | 2021-05-06 10:00 | 1w | 0d |  |  | Программист#1 | 40h | 330 | 330 |
| 16 | 4.4 | Создание рабочей версии ядра |  | 6.1w | 2021-05-06 09:00 | 2021-06-21 12:55 | 15 | 2021-05-06 10:00 | 2021-06-21 15:23 | 6.11w | 0d | 2.2d |  | Ведущий программист; Программист#1; Программист#2; Программист#3; Программист#4 | 1200h | 9,412.16 | 9,412.16 |
| 17 | 5 | Создание мультимедиа - наполнения |  | 6w | 2021-04-06 15:00 | 2021-05-21 13:00 | 3 | 2021-04-06 16:00 | 2021-05-21 13:00 | 6w | 58.05d | 58.12d |  | Мультимедиа-корреспондент | 240h | 740 | 740 |
| 18 | 6 | Создание справочной системы |  | 2w | 2021-07-26 10:00 | 2021-08-09 12:00 | 7 | 2021-07-26 10:00 | 2021-08-09 12:00 | 2w | 3.18d | 2d | start no earlier than 2021-07-26 10:00 | Технический писатель | 80h | 420 | 420 |
| 19 | 7 | **Создание руководства пользователя** |  | 17.25d | 2021-06-28 12:55 | 2021-07-21 15:55 | 7FS-10d | 2021-06-28 15:23 | 2021-07-22 16:23 | 18.12d | 0d | 2.2d |  |  | 160h | 1,010 | 1,010 |
| 20 | 7.1 | Разработка дизайна руководства |  | 1w | 2021-06-28 12:55 | 2021-07-05 14:55 |  | 2021-06-28 15:23 | 2021-07-06 09:23 | 1w | 0d |  |  | Художник-дизайнер | 40h | 390 | 390 |
| 21 | 7.2 | Написание руководства пользователя |  | 3w | 2021-06-30 12:55 | 2021-07-21 15:55 | 20SS+2d | 2021-06-30 15:23 | 2021-07-22 16:23 | 3w | 0d |  |  | Технический писатель | 120h | 620 | 620 |
| 22 | 8 | **Создание web - сайта и поддержка** |  | 23.62d | 2021-06-30 12:55 | 2021-08-03 09:55 |  | 2021-06-30 15:23 | 2021-08-04 14:23 | 24.88d | 0d |  |  |  | 248h | 2,106 | 2,106 |
| 23 | 8.1 | Разработка структуры сайта |  | 1d | 2021-06-30 12:55 | 2021-07-01 12:55 | 21SS | 2021-06-30 15:23 | 2021-07-01 15:23 | 1d | 0d |  |  | Web-дизайнер | 8h | 106 | 106 |
| 24 | 8.2 | Разработка дизайна сайта |  | 1.43w | 2021-07-01 12:55 | 2021-07-12 15:55 | 23 | 2021-07-01 15:23 | 2021-07-13 12:23 | 1.4w | 0d |  |  | 3D аниматор; Web-дизайнер; Художник-дизайнер | 120h | 1,110 | 1,110 |
| 25 | 8.3 | Наполнение сайта |  | 3w | 2021-07-12 15:55 | 2021-08-03 09:55 | 24 | 2021-07-13 12:23 | 2021-08-04 14:23 | 3w | 0d | 2.2d |  | Web-дизайнер | 120h | 890 | 890 |
| 26 | 9 | Тестирование сайта |  | 2.49w | 2021-07-27 09:55 | 2021-08-12 14:25 | 22FS-1w | 2021-07-28 14:23 | 2021-08-16 12:39 | 2.56w | 0d |  |  | Ведущий программист; Программист#1; Программист#2; Программист#3; Программист#4 | 480h | 3,940.97 | 3,940.97 |
| 27 | 10 | Сдача сайта в эксплуатацию | milestone | 0w | 2021-08-12 14:25 | 2021-08-12 14:25 | 26 | 2021-08-16 12:39 | 2021-08-16 12:39 | 0w | 0d | 2.2d |  |  |  |  |  |

| ID | WBS | Task | Duration | Start | Finish | Baseline start | Baseline finish | Baseline duration | Total slack | Free slack | Constraint | Resources | Work | Cost | Baseline cost |
| --- | --- | --- | --- | --- | --- | --- | --- | --- | --- | --- | --- | --- | --- | --- | --- |
| 28 | 11 | **Совещание** | 111.12d | 2021-03-03 09:00 | 2021-08-11 10:00 | 2021-03-01 09:00 | 2021-08-16 09:00 | 116d | 1.43d | 0d |  |  | 168h | 1,464 | 1,464 |
| 29 | 11.1 | Совещание 1 | 1h | 2021-03-03 09:00 | 2021-03-03 10:00 | 2021-03-01 09:00 | 2021-03-01 10:00 | 1h | 112.43d | 111d | start no earlier than 2021-03-03 08:00 | 3D аниматор; Web-дизайнер; Ведущий программист; Мультимедиа-корреспондент; Системный аналитик; Технический писатель; Художник-дизайнер | 7h | 61 | 61 |
| 30 | 11.2 | Совещание 2 | 1h | 2021-03-10 09:00 | 2021-03-10 10:00 | 2021-03-09 09:00 | 2021-03-09 10:00 | 1h | 108.43d | 107d | start no earlier than 2021-03-10 08:00 | 3D аниматор; Web-дизайнер; Ведущий программист; Мультимедиа-корреспондент; Системный аналитик; Технический писатель; Художник-дизайнер | 7h | 61 | 61 |
| 31 | 11.3 | Совещание 3 | 1h | 2021-03-17 09:00 | 2021-03-17 10:00 | 2021-03-15 09:00 | 2021-03-15 10:00 | 1h | 103.43d | 102d | start no earlier than 2021-03-17 08:00 | 3D аниматор; Web-дизайнер; Ведущий программист; Мультимедиа-корреспондент; Системный аналитик; Технический писатель; Художник-дизайнер | 7h | 61 | 61 |
| 32 | 11.4 | Совещание 4 | 1h | 2021-03-24 09:00 | 2021-03-24 10:00 | 2021-03-22 09:00 | 2021-03-22 10:00 | 1h | 98.43d | 97d | start no earlier than 2021-03-24 08:00 | 3D аниматор; Web-дизайнер; Ведущий программист; Мультимедиа-корреспондент; Системный аналитик; Технический писатель; Художник-дизайнер | 7h | 61 | 61 |
| 33 | 11.5 | Совещание 5 | 1h | 2021-03-31 09:00 | 2021-03-31 10:00 | 2021-03-29 09:00 | 2021-03-29 10:00 | 1h | 93.43d | 92d | start no earlier than 2021-03-31 08:00 | 3D аниматор; Web-дизайнер; Ведущий программист; Мультимедиа-корреспондент; Системный аналитик; Технический писатель; Художник-дизайнер | 7h | 61 | 61 |
| 34 | 11.6 | Совещание 6 | 1h | 2021-04-07 09:00 | 2021-04-07 10:00 | 2021-04-05 09:00 | 2021-04-05 10:00 | 1h | 88.43d | 87d | start no earlier than 2021-04-07 08:00 | 3D аниматор; Web-дизайнер; Ведущий программист; Мультимедиа-корреспондент; Системный аналитик; Технический писатель; Художник-дизайнер | 7h | 61 | 61 |
| 35 | 11.7 | Совещание 7 | 1h | 2021-04-14 09:00 | 2021-04-14 10:00 | 2021-04-12 09:00 | 2021-04-12 10:00 | 1h | 83.43d | 82d | start no earlier than 2021-04-14 08:00 | 3D аниматор; Web-дизайнер; Ведущий программист; Мультимедиа-корреспондент; Системный аналитик; Технический писатель; Художник-дизайнер | 7h | 61 | 61 |
| 36 | 11.8 | Совещание 8 | 1h | 2021-04-21 09:00 | 2021-04-21 10:00 | 2021-04-19 09:00 | 2021-04-19 10:00 | 1h | 78.43d | 77d | start no earlier than 2021-04-21 08:00 | 3D аниматор; Web-дизайнер; Ведущий программист; Мультимедиа-корреспондент; Системный аналитик; Технический писатель; Художник-дизайнер | 7h | 61 | 61 |
| 37 | 11.9 | Совещание 9 | 1h | 2021-04-28 09:00 | 2021-04-28 10:00 | 2021-04-26 09:00 | 2021-04-26 10:00 | 1h | 73.43d | 72d | start no earlier than 2021-04-28 08:00 | 3D аниматор; Web-дизайнер; Ведущий программист; Мультимедиа-корреспондент; Системный аналитик; Технический писатель; Художник-дизайнер | 7h | 61 | 61 |
| 38 | 11.10 | Совещание 10 | 1h | 2021-05-05 09:00 | 2021-05-05 10:00 | 2021-05-04 09:00 | 2021-05-04 10:00 | 1h | 69.43d | 68d | start no earlier than 2021-05-05 08:00 | 3D аниматор; Web-дизайнер; Ведущий программист; Мультимедиа-корреспондент; Системный аналитик; Технический писатель; Художник-дизайнер | 7h | 61 | 61 |
| 39 | 11.11 | Совещание 11 | 1h | 2021-05-12 09:00 | 2021-05-12 10:00 | 2021-05-11 09:00 | 2021-05-11 10:00 | 1h | 65.43d | 64d | start no earlier than 2021-05-12 08:00 | 3D аниматор; Web-дизайнер; Ведущий программист; Мультимедиа-корреспондент; Системный аналитик; Технический писатель; Художник-дизайнер | 7h | 61 | 61 |
| 40 | 11.12 | Совещание 12 | 1h | 2021-05-19 09:00 | 2021-05-19 10:00 | 2021-05-17 09:00 | 2021-05-17 10:00 | 1h | 60.43d | 59d | start no earlier than 2021-05-19 08:00 | 3D аниматор; Web-дизайнер; Ведущий программист; Мультимедиа-корреспондент; Системный аналитик; Технический писатель; Художник-дизайнер | 7h | 61 | 61 |
| 41 | 11.13 | Совещание 13 | 1h | 2021-05-26 09:00 | 2021-05-26 10:00 | 2021-05-24 09:00 | 2021-05-24 10:00 | 1h | 55.43d | 54d | start no earlier than 2021-05-26 08:00 | 3D аниматор; Web-дизайнер; Ведущий программист; Мультимедиа-корреспондент; Системный аналитик; Технический писатель; Художник-дизайнер | 7h | 61 | 61 |
| 42 | 11.14 | Совещание 14 | 1h | 2021-06-02 09:00 | 2021-06-02 10:00 | 2021-05-31 09:00 | 2021-05-31 10:00 | 1h | 50.43d | 49d | start no earlier than 2021-06-02 08:00 | 3D аниматор; Web-дизайнер; Ведущий программист; Мультимедиа-корреспондент; Системный аналитик; Технический писатель; Художник-дизайнер | 7h | 61 | 61 |
| 43 | 11.15 | Совещание 15 | 1h | 2021-06-09 09:00 | 2021-06-09 10:00 | 2021-06-07 09:00 | 2021-06-07 10:00 | 1h | 45.43d | 44d | start no earlier than 2021-06-09 08:00 | 3D аниматор; Web-дизайнер; Ведущий программист; Мультимедиа-корреспондент; Системный аналитик; Технический писатель; Художник-дизайнер | 7h | 61 | 61 |
| 44 | 11.16 | Совещание 16 | 1h | 2021-06-16 09:00 | 2021-06-16 10:00 | 2021-06-15 09:00 | 2021-06-15 10:00 | 1h | 41.43d | 40d | start no earlier than 2021-06-16 08:00 | 3D аниматор; Web-дизайнер; Ведущий программист; Мультимедиа-корреспондент; Системный аналитик; Технический писатель; Художник-дизайнер | 7h | 61 | 61 |
| 45 | 11.17 | Совещание 17 | 1h | 2021-06-23 09:00 | 2021-06-23 10:00 | 2021-06-21 09:00 | 2021-06-21 10:00 | 1h | 36.43d | 35d | start no earlier than 2021-06-23 08:00 | 3D аниматор; Web-дизайнер; Ведущий программист; Мультимедиа-корреспондент; Системный аналитик; Технический писатель; Художник-дизайнер | 7h | 61 | 61 |
| 46 | 11.18 | Совещание 18 | 1h | 2021-06-30 09:00 | 2021-06-30 10:00 | 2021-06-28 09:00 | 2021-06-28 10:00 | 1h | 31.43d | 30d | start no earlier than 2021-06-30 08:00 | 3D аниматор; Web-дизайнер; Ведущий программист; Мультимедиа-корреспондент; Системный аналитик; Технический писатель; Художник-дизайнер | 7h | 61 | 61 |
| 47 | 11.19 | Совещание 19 | 1h | 2021-07-07 09:00 | 2021-07-07 10:00 | 2021-07-05 09:00 | 2021-07-05 10:00 | 1h | 26.43d | 25d | start no earlier than 2021-07-07 08:00 | 3D аниматор; Web-дизайнер; Ведущий программист; Мультимедиа-корреспондент; Системный аналитик; Технический писатель; Художник-дизайнер | 7h | 61 | 61 |
| 48 | 11.20 | Совещание 20 | 1h | 2021-07-14 09:00 | 2021-07-14 10:00 | 2021-07-12 09:00 | 2021-07-12 10:00 | 1h | 21.43d | 20d | start no earlier than 2021-07-14 08:00 | 3D аниматор; Web-дизайнер; Ведущий программист; Мультимедиа-корреспондент; Системный аналитик; Технический писатель; Художник-дизайнер | 7h | 61 | 61 |
| 49 | 11.21 | Совещание 21 | 1h | 2021-07-21 09:00 | 2021-07-21 10:00 | 2021-07-19 09:00 | 2021-07-19 10:00 | 1h | 16.43d | 15d | start no earlier than 2021-07-21 08:00 | 3D аниматор; Web-дизайнер; Ведущий программист; Мультимедиа-корреспондент; Системный аналитик; Технический писатель; Художник-дизайнер | 7h | 61 | 61 |
| 50 | 11.22 | Совещание 22 | 1h | 2021-07-28 09:00 | 2021-07-28 10:00 | 2021-07-26 09:00 | 2021-07-26 10:00 | 1h | 11.43d | 10d | start no earlier than 2021-07-28 08:00 | 3D аниматор; Web-дизайнер; Ведущий программист; Мультимедиа-корреспондент; Системный аналитик; Технический писатель; Художник-дизайнер | 7h | 61 | 61 |
| 51 | 11.23 | Совещание 23 | 1h | 2021-08-04 09:00 | 2021-08-04 10:00 | 2021-08-02 09:00 | 2021-08-02 10:00 | 1h | 6.43d | 5d | start no earlier than 2021-08-04 08:00 | 3D аниматор; Web-дизайнер; Ведущий программист; Мультимедиа-корреспондент; Системный аналитик; Технический писатель; Художник-дизайнер | 7h | 61 | 61 |
| 52 | 11.24 | Совещание 24 | 1h | 2021-08-11 09:00 | 2021-08-11 10:00 | 2021-08-09 09:00 | 2021-08-09 10:00 | 1h | 1.43d | 0d | start no earlier than 2021-08-11 08:00 | 3D аниматор; Web-дизайнер; Ведущий программист; Мультимедиа-корреспондент; Системный аналитик; Технический писатель; Художник-дизайнер | 7h | 61 | 61 |
